# 标准规范

How a schedule from a web Gantt chart changed from version to version. A marks actual dates.

## Version 1 (saved 2024-06-25)

| ID | WBS | Task | Duration | Start | Finish | Complete |
| --- | --- | --- | --- | --- | --- | --- |
| 2 | 1 | **《城市安全风险综合监测预警平台数据接入规范团标》** | 121d | 2024-04-01 | 2024-09-16 | 42% |
| 3 |  | 第一部分：城市生命线工程（桥梁） | 66d | 2024-04-01 | 2024-07-01 | 80% |
| 4 |  | 第二部分：公共安全（电梯） | 68d | 2024-06-13 | 2024-09-16 | 30% |
| 5 |  | 第三部分：生产安全（危化品） | 68d | 2024-06-13 | 2024-09-16 | 30% |
| 6 |  | 第四部分：自然灾害（内涝） | 68d | 2024-06-13 | 2024-09-16 | 30% |
| 7 | 2 | **《应急管理森防烟火识别报警数据技术规范》** | 157d | 2024-05-27 | 2024-12-31 | 11% |
| 8 |  | 初稿编制 | 25d | 2024-05-27 | 2024-06-28 | 70% |
| 9 |  | 组内评审（给出优化建议） | 11d | 2024-07-01 | 2024-07-15 |  |
| 10 |  | 修改初稿 | 11d | 2024-07-16 | 2024-07-30 |  |
| 11 |  | 应急局挂网公示 | 34d | 2024-07-31 | 2024-09-16 |  |
| 12 |  | 市监局挂网征求意见 | 45d | 2024-09-16 | 2024-11-15 |  |
| 13 |  | 专家评审 | 12d | 2024-11-15 | 2024-12-02 |  |
| 14 |  | 报送标准委 | 22d | 2024-12-02 | 2024-12-31 |  |
| 15 | 3 | **《应急通信市、区联动技术规范》** | 241d | 2024-06-13 | 2025-05-15 | 2% |
| 16 |  | 初稿编制 | 52d | 2024-06-13 | 2024-08-23 | 10% |
| 17 |  | 组内评审（给出优化意见） | 16d | 2024-08-26 | 2024-09-16 |  |
| 18 |  | 修改初稿 | 22d | 2024-09-16 | 2024-10-15 |  |
| 19 |  | 应急局挂网公示 | 34d | 2024-10-16 | 2024-12-02 |  |
| 20 |  | 市监局挂网征求意见 | 38d | 2024-12-02 | 2025-01-22 |  |
| 21 |  | 专家评审 | 30d | 2025-01-23 | 2025-03-05 |  |
| 22 |  | 报送标委会 | 51d | 2025-03-06 | 2025-05-15 |  |
| 23 | 4 | **《应急管理城市生命线工程数据规范》** | 136d | 2024-06-25 | 2024-12-31 |  |
| 24 |  | 初稿编制 | 15d | 2024-06-25 | 2024-07-15 |  |
| 25 |  | 组内评审（给出优化意见） | 10d | 2024-07-16 | 2024-07-29 |  |
| 26 |  | 修改初稿 | 15d | 2024-07-30 | 2024-08-19 |  |
| 27 |  | 应急局挂网公示 | 30d | 2024-08-20 | 2024-09-30 |  |
| 28 |  | 市监局挂网征求意见 | 24d | 2024-10-01 | 2024-11-01 |  |
| 29 |  | 专家评审 | 20d | 2024-11-04 | 2024-11-29 |  |
| 30 |  | 报送标委会 | 22d | 2024-12-02 | 2024-12-31 |  |

## Version 2 (saved 2024-06-25)

Last finish stays 2025-05-15.

Changed:

| ID | Task | Finish | Duration |
| --- | --- | --- | --- |
| 16 | 初稿编制 | 2024-08-23 → 2024-08-09 (-14d) | 52d → 42d |

## Version 3 (saved 2024-07-01)

Last finish stays 2025-05-15.

Changed:

| ID | Task | Start | Finish | Duration |
| --- | --- | --- | --- | --- |
| 24 | 初稿编制 |  | 2024-07-15 → 2024-07-22 (+7d) | 15d → 20d |
| 25 | 组内评审（给出优化意见） | 2024-07-16 → 2024-07-23 (+7d) | 2024-07-29 → 2024-08-05 (+7d) |  |
| 26 | 修改初稿 |  | 2024-08-19 → 2024-08-30 (+11d) | 15d → 24d |
| 27 | 应急局挂网公示 | 2024-08-20 → 2024-09-02 (+13d) |  | 30d → 21d |
| 28 | 市监局挂网征求意见 |  | 2024-11-01 → 2024-10-31 (-1d) | 24d → 23d |
